# Projet Brodeuse Numérique CNC

Schedule from GanttProject, 2026-09-26 to 2027-01-28.
Transformation et retrofit d une machine a coudre mecanique Janome Facility 21 en brodeuse numerique 2 axes XY

## Calendars

- Project calendar: Mon-Fri working; Sat-Sun off.

## Resources

| Resource |
| --- |
| RhomDev (Romaric Pradeau) |
| matazzo (Maé Tazzioli) |

## Schedule

| ID | WBS | Task | Duration | Start | Finish | Predecessors | Complete |
| --- | --- | --- | --- | --- | --- | --- | --- |
| 1 | 1 | **Phase 1 : Cadrage & Spécifications** | 6d | 2026-09-26 | 2026-10-05 |  | 100% |
| 2 | 1.1 | Prise en main du sujet & définition du besoin | 2d | 2026-09-26 | 2026-09-29 |  | 100% |
| 3 | 1.2 | Analyse de la machine Janome Facility 21 | 2d | 2026-09-28 | 2026-09-29 | 2 | 100% |
| 4 | 1.3 | Rédaction du Cahier des Charges fonctionnel | 3d | 2026-09-29 | 2026-10-01 | 3 | 100% |
| 5 | 1.4 | Déploiement coffre Obsidian & arborescence Git | 2d | 2026-10-01 | 2026-10-02 | 4 | 100% |
| 6 | 2 | **Phase 2 : Études Préliminaires & Choix Techniques** | 25d | 2026-09-29 | 2026-11-02 |  | 100% |
| 7 | 2.1 | Analyse de la carte MKS Base V1.4 (ATmega2560) | 3d | 2026-09-29 | 2026-10-01 | 4 | 100% |
| 8 | 2.2 | Étude du variateur AC RobotDyn (découpe de phase) | 4d | 2026-09-30 | 2026-10-05 | 7 | 100% |
| 9 | 2.3 | Étude théorique Fast PWM vs découpe AC | 2d | 2026-09-30 | 2026-10-01 | 8 | 100% |
| 10 | 2.4 | Étude initiale de la fourche optique H21A1 | 4d | 2026-09-29 | 2026-10-02 | 4 | 100% |
| 11 | 2.5 | Conception PCB comparateur AOP pour H21A1 | 5d | 2026-09-30 | 2026-10-06 | 10 | 100% |
| 12 | 2.6 | Essais comparateurs (LM318, TL081, LM393) | 3d | 2026-10-20 | 2026-10-22 | 11 | 100% |
| 13 | 2.7 | Dimensionnement cinématique poulie encodeur | 2d | 2026-10-21 | 2026-10-22 | 3 | 100% |
| 14 | 3 | **Phase 3 : Expérimentation, Tests Manuels & Pivot** | 2d | 2026-11-02 | 2026-11-03 |  | 100% |
| 15 | 3.1 | Test manuel couture machine (carré piqué réussi) | 1d | 2026-11-02 | 2026-11-02 | 3 | 100% |
| 16 | 3.2 | Décision : Abandon H21A1 au profit du Fin de Course | 1d | 2026-11-02 | 2026-11-02 | 12, 15 | 100% |
| 17 | 3.3 | Choix du fin de course à galet (PMH & homing) | 1d | 2026-11-02 | 2026-11-02 | 16 | 100% |
| 18 | 3.4 | Validation encodeur rotatif SEN0230 (< 5000 tr/min) | 1d | 2026-11-02 | 2026-11-02 | 13, 16 | 100% |
| 19 | 3.5 | Établissement de la liste des besoins (BOM) | 1d | 2026-11-02 | 2026-11-02 | 17, 18 | 100% |
| 20 | 4 | **Phase 4 : Conception Mécanique & Approvisionnement** | 12d | 2026-11-04 | 2026-11-19 |  | 10% |
| 21 | 4.1 | Commande des composants et fournitures (BOM) | 5d | 2026-11-04 | 2026-11-10 | 19 |  |
| 22 | 4.2 | Revoir le design CAO du plateau de travail XY | 5d | 2026-11-04 | 2026-11-10 | 15 |  |
| 23 | 4.3 | Modélisation 3D poulie encodeur (16-18 dents) | 2d | 2026-11-04 | 2026-11-05 | 18 |  |
| 24 | 4.4 | Impression 3D poulie encodeur (PETG/Nylon) | 1d | 2026-11-06 | 2026-11-06 | 23 |  |
| 25 | 4.5 | Modélisation & impression support encodeur | 3d | 2026-11-07 | 2026-11-11 | 24 |  |
| 26 | 4.6 | Conception came d arbre & support switch PMH à galet | 3d | 2026-11-05 | 2026-11-09 | 17 |  |
| 27 | 4.7 | Supports et butées fins de course plateau X/Y | 3d | 2026-11-09 | 2026-11-11 | 22 |  |
| 28 | 4.8 | Fabrication / assemblage nouveau plateau de travail | 4d | 2026-11-11 | 2026-11-16 | 22 |  |

| ID | WBS | Task | Duration | Start | Finish | Predecessors |
| --- | --- | --- | --- | --- | --- | --- |
| 29 | 5 | **Phase 5 : Électronique, Câblage & Puissance** | 8d | 2026-11-11 | 2026-11-20 |  |
| 30 | 5.1 | Réception & contrôle des composants commandés | 1d | 2026-11-11 | 2026-11-11 | 21 |
| 31 | 5.2 | Intégration sous boîtier sécurisé variateur AC 230V | 3d | 2026-11-12 | 2026-11-16 | 30 |
| 32 | 5.3 | Câblage moteurs pas-à-pas X/Y sur MKS Base | 2d | 2026-11-12 | 2026-11-13 | 28 |
| 33 | 5.4 | Câblage fins de course (Aiguille PMH, X-Min, Y-Min) | 2d | 2026-11-13 | 2026-11-16 | 26, 27 |
| 34 | 5.5 | Câblage encodeur SEN0230 sur MKS Base | 1d | 2026-11-16 | 2026-11-16 | 25, 30 |
| 35 | 5.6 | Validation électrique globale sous tension (12V/230V) | 2d | 2026-11-17 | 2026-11-18 | 31, 32, 33, 34 |
| 36 | 6 | **Phase 6 : Développement Firmware Arduino (C++)** | 15d | 2026-11-16 | 2026-12-04 |  |
| 37 | 6.1 | Routine interruption ZC & commande TRIAC AC | 4d | 2026-11-16 | 2026-11-19 | 31 |
| 38 | 6.2 | Routine décodage impulsions encodeur SEN0230 | 3d | 2026-11-18 | 2026-11-20 | 34 |
| 39 | 6.3 | Séquence de Homing aiguille au PMH (galet) | 2d | 2026-11-20 | 2026-11-23 | 33 |
| 40 | 6.4 | Séquence de Homing axes plateau X/Y | 2d | 2026-11-21 | 2026-11-24 | 32, 33 |
| 41 | 6.5 | Machine à états synchronisation aiguille / avance XY | 5d | 2026-11-24 | 2026-11-30 | 37, 38, 39, 40 |
| 42 | 6.6 | Interpréteur G-code & pilotage pas-à-pas (A4982) | 4d | 2026-11-27 | 2026-12-02 | 41 |
| 43 | 7 | **Phase 7 : Suite Logicielle Python Hôte** | 16d | 2026-11-20 | 2026-12-11 |  |
| 44 | 7.1 | Streamer USB série avec acquittement ok | 3d | 2026-11-20 | 2026-11-24 | 7 |
| 45 | 7.2 | Module vectorisation & extraction points SVG | 5d | 2026-11-24 | 2026-11-30 | 44 |
| 46 | 7.3 | Générateur de G-code spécialisé broderie | 4d | 2026-11-30 | 2026-12-03 | 45 |
| 47 | 7.4 | Visualiseur graphique 2D des trajectoires | 3d | 2026-12-03 | 2026-12-07 | 46 |
| 48 | 8 | **Phase 8 : Intégration Globale & Essais Avant Noël** | 11d | 2026-12-04 | 2026-12-18 |  |
| 49 | 8.1 | Essais à vide : mouvement cadre synchronisé sans fil | 3d | 2026-12-04 | 2026-12-08 | 42, 44 |
| 50 | 8.2 | Première broderie réelle : carré automatique | 3d | 2026-12-08 | 2026-12-10 | 46, 49 |
| 51 | 8.3 | Optimisation vitesse & réglage découpe de phase | 3d | 2026-12-11 | 2026-12-15 | 50 |
| 52 | 8.4 | Broderie d un motif complet avant Noël | 3d | 2026-12-15 | 2026-12-17 | 47, 51 |

| ID | WBS | Task | Type | Duration | Start | Finish | Predecessors |
| --- | --- | --- | --- | --- | --- | --- | --- |
| 53 | 9 | **Trêve Hivernale : Vacances de Noël (Activité Réduite)** |  | 10d | 2026-12-19 | 2027-01-01 |  |
| 54 | 9.1 | Pause de Noël & veille documentaire (peu de travail) |  | 10d | 2026-12-19 | 2027-01-01 |  |
| 55 | 10 | **Phase 9 : Finalisation, Rapport & Soutenance (Janvier)** |  | 19d | 2027-01-04 | 2027-01-28 |  |
| 56 | 10.1 | Rédaction intensive du rapport LaTeX (manuscrit) |  | 10d | 2027-01-04 | 2027-01-15 | 52, 54 |
| 57 | 10.2 | Diaporama soutenance & montage vidéo démo |  | 5d | 2027-01-15 | 2027-01-21 | 56 |
| 58 | 10.3 | Répétitions orales & réglage timing présentation |  | 4d | 2027-01-22 | 2027-01-27 | 57 |
| 59 | 10.4 | SOUTENANCE ORALE FINALE (DEADLINE 28 JANVIER) | milestone | 0d | 2027-01-28 | 2027-01-28 | 58 |
